# WellQC Subsurface Log QA Schedule

Schedule from MS Project XML, 2026-07-20 to 2026-11-27.
NDI-G5 WellQC Team

## Schedule

| ID | WBS | Task | Type | Duration | Start | Finish | Predecessors | Complete |
| --- | --- | --- | --- | --- | --- | --- | --- | --- |
| 1 | 1 | **WellQC Platform Development** |  | 90d | 2026-07-20 | 2026-11-27 |  | 78% |
| 2 | 1.1 | **Sprint 1: Discovery, Architecture & Core Stack** |  | 10d | 2026-07-20 | 2026-07-31 |  | 100% |
| 3 | 1.1.1 | Petrophysical Domain Modeling & Curve Physical Limits |  | 5d | 2026-07-20 | 2026-07-24 |  | 100% |
| 4 | 1.1.2 | LAS 2.0 Parser Engine & Line Splitter Validation |  | 6d | 2026-07-22 | 2026-07-29 | 3 | 100% |
| 5 | 1.1.3 | Next.js 15 App Shell, Navigation & Design System |  | 7d | 2026-07-20 | 2026-07-28 |  | 100% |
| 6 | 1.1.4 | Database Schema Design & Prisma Setup |  | 7d | 2026-07-22 | 2026-07-30 | 3 | 100% |
| 7 | 1.1.5 | CI/CD Pipeline Setup & Repository Governance |  | 5d | 2026-07-20 | 2026-07-25 |  | 100% |
| 8 | 1.1.6 | Milestone: Core Architecture & Ingestion Proof-of-Concept | milestone | 0d | 2026-07-31 | 2026-07-31 | 4, 5, 6, 7 | 100% |
| 9 | 1.2 | **Sprint 2: Foundation, Auth & Multi-Tenant Database** |  | 10d | 2026-08-03 | 2026-08-14 | 8 | 100% |
| 10 | 1.2.1 | Multi-Tenant PostgreSQL Architecture on Neon |  | 5d | 2026-08-03 | 2026-08-07 | 8 | 100% |
| 11 | 1.2.2 | Authentication Engine, Session Tokens & Scrypt Hashing |  | 5d | 2026-08-05 | 2026-08-11 | 10 | 100% |
| 12 | 1.2.3 | Mnemonic Dictionary & 14 Standard Curve Classifications |  | 5d | 2026-08-03 | 2026-08-07 | 8 | 100% |
| 13 | 1.2.4 | Wireline Curve Anomaly Classification & Root Cause Engine |  | 5d | 2026-08-06 | 2026-08-12 | 12 | 100% |
| 14 | 1.2.5 | File Upload UI with Drag-and-Drop & Pre-Validation |  | 5d | 2026-08-07 | 2026-08-13 | 11 | 100% |
| 15 | 1.2.6 | Vercel Preview Deployments & DB Migration Automation |  | 10d | 2026-08-03 | 2026-08-14 | 8 | 100% |
| 16 | 1.2.7 | Milestone: Authenticated Ingestion & Mnemonic Baseline | milestone | 0d | 2026-08-14 | 2026-08-14 | 10, 11, 13, 14, 15 | 100% |
| 17 | 1.3 | **Sprint 3: Core Engine, Quality Scoring & Ingestion Workspace** |  | 10d | 2026-08-17 | 2026-08-28 | 16 | 100% |
| 18 | 1.3.1 | Multi-Factor Quality Scoring Algorithm (Completeness/Integrity/Noise) |  | 5d | 2026-08-17 | 2026-08-21 | 16 | 100% |
| 19 | 1.3.2 | Upload Workspace Redesign & Modular Tabbed Layout |  | 5d | 2026-08-18 | 2026-08-24 | 16 | 100% |
| 20 | 1.3.3 | Subsurface Basin Analytics & KPI Dashboard Aggregations |  | 5d | 2026-08-19 | 2026-08-25 | 18 | 100% |
| 21 | 1.3.4 | Automated PDF Audit Report Generator |  | 5d | 2026-08-21 | 2026-08-27 | 18 | 100% |
| 22 | 1.3.5 | Atomic Transaction Ingestion Pipeline & Downsampling |  | 5d | 2026-08-20 | 2026-08-26 | 18 | 100% |
| 23 | 1.3.6 | Milestone: Complete Quality Scoring & PDF Audit Capability | milestone | 0d | 2026-08-28 | 2026-08-28 | 18, 19, 20, 21, 22 | 100% |
| 24 | 1.4 | **Sprint 4: Advanced Visualisation, Imputation & Python Migration** |  | 10d | 2026-08-31 | 2026-09-11 | 23 | 100% |
| 25 | 1.4.1 | FastAPI Microservice Migration & Native NumPy/Pandas Stack |  | 6d | 2026-08-31 | 2026-09-07 | 23 | 100% |
| 26 | 1.4.2 | SVG Multi-Track Wireline Log Viewer with Depth Sync |  | 6d | 2026-09-01 | 2026-09-08 | 23 | 100% |
| 27 | 1.4.3 | Custom Mnemonic Aliases & Tenant Rule Management |  | 5d | 2026-09-02 | 2026-09-08 | 25 | 100% |
| 28 | 1.4.4 | Imputation Algorithm Benchmark (KNN, Spline, Random Forest, Gradient Boosting, Linear) |  | 5d | 2026-09-03 | 2026-09-09 | 25 | 100% |
| 29 | 1.4.5 | Zero-Mock Clean Seeder & Performance Load Testing |  | 5d | 2026-09-04 | 2026-09-10 | 25 | 100% |
| 30 | 1.4.6 | Milestone: Unified Python Backend & Interactive Log Viewer | milestone | 0d | 2026-09-11 | 2026-09-11 | 25, 26, 27, 28, 29 | 100% |

| ID | WBS | Task | Type | Duration | Start | Finish | Predecessors | Complete |
| --- | --- | --- | --- | --- | --- | --- | --- | --- |
| 31 | 1.5 | **Sprint 5: Security Hardening, Default-to-Deny RBAC & Admin Tools** |  | 10d | 2026-09-14 | 2026-09-25 | 30 | 100% |
| 32 | 1.5.1 | Server-Side RBAC Enforcement & Ghost Token Elimination |  | 5d | 2026-09-14 | 2026-09-18 | 30 | 100% |
| 33 | 1.5.2 | Self-Registration Role Escalation Block (403 on ADMIN role) |  | 4d | 2026-09-16 | 2026-09-21 | 32 | 100% |
| 34 | 1.5.3 | Interactive Admin Management CLI (`manage_admin.py`) |  | 4d | 2026-09-17 | 2026-09-22 | 32 | 100% |
| 35 | 1.5.4 | Admin Panel UI with Tabbed User Management & Tokens |  | 5d | 2026-09-18 | 2026-09-24 | 33 | 100% |
| 36 | 1.5.5 | Automated Security Test Suite (19 Tests in `test_admin_auth.py`) |  | 5d | 2026-09-21 | 2026-09-25 | 33 | 100% |
| 37 | 1.5.6 | Milestone: Default-to-Deny Security & Administrative Center | milestone | 0d | 2026-09-25 | 2026-09-25 | 32, 33, 34, 35, 36 | 100% |
| 38 | 1.6 | **Sprint 6: Production Hardening & Quality Engine 12-Item Overhaul** |  | 10d | 2026-09-28 | 2026-10-09 | 37 | 100% |
| 39 | 1.6.1 | Item 1-2: Per-Row Anomaly Approvals & Specific Method Routing |  | 5d | 2026-09-28 | 2026-10-02 | 37 | 100% |
| 40 | 1.6.2 | Item 3: AUTO Imputation Gap Ranking via Cross-Validation |  | 5d | 2026-09-29 | 2026-10-05 | 39 | 100% |
| 41 | 1.6.3 | Item 4: Impossible Values Action Suite (Remove / Clip / Delete Row) |  | 5d | 2026-09-30 | 2026-10-06 | 39 | 100% |
| 42 | 1.6.4 | Item 5: Long Null Cluster Guards & Unfillable Flag Boundaries |  | 4d | 2026-10-01 | 2026-10-06 | 40 | 100% |
| 43 | 1.6.5 | Item 6-7: Duplicate Depth Prune & 2-Point Neighbour Despiking |  | 4d | 2026-10-02 | 2026-10-07 | 41 | 100% |
| 44 | 1.6.6 | Item 8-9: Real Change Report Telemetry & Audit Certificate ID |  | 4d | 2026-10-05 | 2026-10-08 | 42, 43 | 100% |
| 45 | 1.6.7 | Item 10-12: Staged Non-Destructive QA UI & Cleaned Export Suite |  | 5d | 2026-10-05 | 2026-10-09 | 39 | 100% |
| 46 | 1.6.8 | Sliding-Window IP Rate Limiter & Security Stabilization |  | 5d | 2026-09-28 | 2026-10-02 | 37 | 100% |
| 47 | 1.6.9 | Milestone: Certified Quality Engine Overhaul & Audit Pipeline | milestone | 0d | 2026-10-09 | 2026-10-09 | 39, 40, 41, 42, 43, 44, 45, 46 | 100% |
| 48 | 1.7 | **Sprint 7: Multi-Well Comparison, Dynamic Workstation & UX Enhancements** |  | 14d | 2026-10-12 | 2026-10-29 | 47 | 100% |
| 49 | 1.7.1 | Multi-Well Depth Alignment & Stratigraphic Correlation Engine (SE1) |  | 5d | 2026-10-12 | 2026-10-16 | 47 | 100% |
| 50 | 1.7.2 | Cross-Well Workstation UI & Interactive SVG Overlaid Track (SE2) |  | 5d | 2026-10-13 | 2026-10-19 | 49 | 100% |
| 51 | 1.7.3 | Stratigraphic Continuity Grading & Depth Shift Mathematics (SE1, DA2) |  | 4d | 2026-10-15 | 2026-10-20 | 49 | 100% |
| 52 | 1.7.4 | NUPRC Compliance Report Template & Digital Signatures (SE2, DA4) |  | 5d | 2026-10-14 | 2026-10-20 | 47 | 100% |
| 53 | 1.7.5 | Niger Delta Formation Cutoffs & Hybrid Markers DB Schema (DA1, CE2) |  | 5d | 2026-10-12 | 2026-10-16 | 47 | 100% |
| 54 | 1.7.6 | Petrophysical Anomaly Benchmark Validation & Test Log Curation (DA3, DA4) |  | 5d | 2026-10-13 | 2026-10-19 | 53 | 100% |
| 55 | 1.7.7 | Multi-File Batch Queue & Progress Ingestion UI (CE1, SE2) |  | 6d | 2026-10-14 | 2026-10-21 | 47 | 100% |
| 56 | 1.7.8 | Enterprise Webhook Management Engine & Admin Integration (CE2) |  | 6d | 2026-10-15 | 2026-10-22 | 47 | 100% |
| 57 | 1.7.9 | Dynamic Multi-Curve Wireline Log Viewer & Channel Selector (SE1, SE2) |  | 5d | 2026-10-20 | 2026-10-26 | 50 | 100% |
| 58 | 1.7.10 | Interactive Dashboard Onboarding Tour Guide & Spotlight Walkthrough (SE2) |  | 4d | 2026-10-22 | 2026-10-27 | 50 | 100% |
| 59 | 1.7.11 | Subsurface Basin Analytics Engine & Real-Time Visualization API (DA3, SE2) |  | 4d | 2026-10-23 | 2026-10-28 | 54 | 100% |
| 60 | 1.7.12 | End-to-End System Test Suite (93 Pytest + 38 Jest Passing) (All) |  | 5d | 2026-10-24 | 2026-10-29 | 57, 58, 59 | 100% |
| 61 | 1.7.13 | Milestone: Multi-Well Platform, Dynamic Workstation & Core Feature Complete | milestone | 0d | 2026-10-29 | 2026-10-29 | 60 | 100% |

| ID | WBS | Task | Type | Duration | Start | Finish | Predecessors |
| --- | --- | --- | --- | --- | --- | --- | --- |
| 62 | 1.8 | **Sprint 8: Production Deployment, NUPRC Operator Pilot & Cloud Scale** |  | 10d | 2026-11-02 | 2026-11-13 | 61 |
| 63 | 1.8.1 | Multi-Region Cloud Deployment & Kubernetes Orchestration (CE1) |  | 5d | 2026-11-02 | 2026-11-06 | 61 |
| 64 | 1.8.2 | Live NUPRC Operator Pilot Program & Formal Submission Validation (DA4, SE2) |  | 6d | 2026-11-03 | 2026-11-10 | 61 |
| 65 | 1.8.3 | Real-Time Wellsite Telemetry Streaming Ingestion (WITSML / OPC-UA) (SE1, CE2) |  | 6d | 2026-11-04 | 2026-11-11 | 63 |
| 66 | 1.8.4 | Unsupervised ML Lithology Clustering on GR-RHOB-NPHI (SE1, DA2) |  | 5d | 2026-11-04 | 2026-11-09 | 61 |
| 67 | 1.8.5 | Advanced Reservoir Rock Physics Module (Sw, Permeability, Net-to-Gross) (DA1, DA2) |  | 5d | 2026-11-05 | 2026-11-11 | 61 |
| 68 | 1.8.6 | Asynchronous Background Ingestion Task Workers & Cloud Queue (CE1, CE2) |  | 5d | 2026-11-05 | 2026-11-11 | 63 |
| 69 | 1.8.7 | Outbound Webhook Cloud Storage Automated Sync Dispatcher (CE2) |  | 5d | 2026-11-06 | 2026-11-12 | 63 |
| 70 | 1.8.8 | Curated In-App Demonstration Well Package for Operator Pilot (DA3) |  | 4d | 2026-11-06 | 2026-11-11 | 64 |
| 71 | 1.8.9 | Enterprise SSO Integration (SAML 2.0 / Azure AD / Okta) & Audit Logs (CE2, SE2) |  | 5d | 2026-11-09 | 2026-11-13 | 63 |
| 72 | 1.8.10 | Milestone: Production Release & NUPRC Pilot Sign-off (All) | milestone | 0d | 2026-11-13 | 2026-11-13 | 63, 64, 65, 66, 67, 68, 69, 70, 71 |
| 73 | 1.9 | **Sprint 9: Enterprise Scale, Real-Time Analytics & Hypercare Operational Handoff** |  | 10d | 2026-11-16 | 2026-11-27 | 72 |
| 74 | 1.9.1 | High-Availability Multi-AZ Database Clustering & Disaster Recovery (CE2) |  | 5d | 2026-11-16 | 2026-11-20 | 72 |
| 75 | 1.9.2 | Automated Periodic AI Model Drift Detection & Petrophysical Re-calibration (SE1, DA2) |  | 5d | 2026-11-17 | 2026-11-23 | 72 |
| 76 | 1.9.3 | 24/7 SLI/SLO Telemetry Observability, Prometheus Metrics & Alerting (CE1) |  | 5d | 2026-11-18 | 2026-11-24 | 74 |
| 77 | 1.9.4 | Enterprise User Training Portal, API Knowledge Base & Interactive Video Guides (DA3, DA4, SE2) |  | 6d | 2026-11-19 | 2026-11-26 | 72 |
| 78 | 1.9.5 | Client Acceptance Review & Regulatory Compliance Handoff (DA4, CE2) |  | 5d | 2026-11-23 | 2026-11-27 | 76, 77 |
| 79 | 1.9.6 | Milestone: Enterprise General Availability (GA) & Steady-State SLAs (All) | milestone | 0d | 2026-11-27 | 2026-11-27 | 74, 75, 76, 77, 78 |
